# OK플라자 클라우드 이전

Schedule from MS Project, 2023-08-01 to 2023-09-14, status date 2023-08-18, A marks actual dates.

## Calendars

- 표준: Mon-Fri 08:00-12:00, 13:00-17:00; Sat-Sun off. Exceptions (off unless hours are given): 2023-08-15 (광복절).

## Resources

| Resource |
| --- |
| 강용준 |
| 김기범 |
| 김은별 |
| 조준범 |

## Schedule

| ID | WBS | Task | Type | Duration | Start | Finish | Predecessors | Complete | Remaining | Baseline start | Baseline finish | Baseline duration | Total slack | Free slack | Constraint | Resources | Work | Actual work | Text1 |
| --- | --- | --- | --- | --- | --- | --- | --- | --- | --- | --- | --- | --- | --- | --- | --- | --- | --- | --- | --- |
| 1 | 1 | 클라우드 이전 계획 작성 |  | 11d | 2023-08-01 A | 2023-08-16 |  | 73% | 3d | 2021-03-22 | 2021-07-08 | 77d | 14.12d |  | finish no earlier than 2023-08-15 | 강용준 | 64h | 64h | 1.42 |
| 2 | 2 | **프로젝트 분리** |  | 31.12d | 2023-08-01 A | 2023-09-14 |  | 17% | 25.71d | 2021-03-22 | 2021-06-30 | 71d | 0d |  |  |  | 297.91h | 52h | 0.06 |
| 3 | 2.1 | 프로젝트 생성(6개) |  | 6d | 2023-08-07 A | 2023-08-16 |  | 83% | 1d | 2021-03-22 | 2021-06-25 | 68d | 1.5d | 0d | start no earlier than 2023-08-07 | 조준범 | 48h | 40h |  |
| 4 | 2.2 | OK플라자 Front 팩키지/소스 정리 |  | 5d | 2023-08-16 A | 2023-08-23 | 3 | 30% | 3.5d | 2021-04-22 | 2021-04-28 | 5d | 6d | 0d |  | 조준범 | 40h | 12h |  |
| 5 | 2.3 | OK플라자 Admin 팩키지/소스 정리 |  | 5d | 2023-08-23 | 2023-08-30 | 4 |  |  | 2021-06-04 | 2021-06-11 | 6d | 6d | 0d |  | 조준범 | 40h |  |  |
| 6 | 2.4 | OK플라자 BI 팩키지/소스 정리 |  | 5d | 2023-08-30 | 2023-09-06 | 5 |  |  | 2021-06-04 | 2021-06-11 | 6d | 6d |  |  | 조준범 | 40h |  |  |
| 7 | 2.5 | **OK플리지 Front 튜닝** |  | 9d | 2023-08-22 A | 2023-09-04 |  |  | 9d | 2021-04-02 | 2021-06-30 | 62d | 8d |  |  |  | 65.91h |  | 0.17 |
| 8 | 2.5.1 | 튜닝 대상 파악/분석 |  | 3.38d | 2023-08-22 A | 2023-08-25 |  |  | 3.38d | 2021-04-02 | 2021-04-06 | 3d | 13.62d | 9d | finish no earlier than 2023-08-24 | 김기범 [95.8%] | 25.91h |  |  |
| 9 | 2.5.2 | 튜닝작업 |  | 5d | 2023-08-28 A | 2023-09-04 | 8SF |  | 5d | 2021-04-23 | 2021-05-28 | 24d | 8d |  | finish no earlier than 2023-09-01 | 김기범 | 40h |  |  |
| 10 | 2.6 | **OK플라자 Admin 듀닝** |  | 31.12d | 2023-08-01 A | 2023-09-14 |  |  | 31.12d | 2021-05-26 | 2021-05-27 | 2d | 0d |  |  |  | 64h |  |  |
| 11 | 2.6.1 | 튜닝 대상 파악/분석 |  | 3d | 2023-09-04 A | 2023-09-07 |  |  | 3d | 2021-06-15 | 2021-06-16 | 2d | 0d |  |  | 김기범 | 24h |  |  |
| 12 | 2.6.2 | 튜닝작업 |  | 5d | 2023-08-01 A | 2023-09-14 | 11 |  | 5d | 2021-06-28 | 2021-06-30 | 3d | 0d |  |  | 김기범 | 40h |  |  |
| 13 | 3 | **Data 클린징** |  | 20d | 2023-08-01 A | 2023-08-29 |  |  | 20d | 2021-03-15 | 2021-07-14 | 86d | 11.12d |  |  |  | 320h |  | -0.3 |
| 14 | 3.1 | 실적조회 화면설계 |  | 10d | 2023-08-01 | 2023-08-14 |  |  |  | 2021-03-26 | 2021-03-30 | 3d | 15.12d |  |  | 강용준 | 80h |  |  |
| 15 | 3.2 | 실적조회 DB 설계 |  | 3d | 2023-08-01 | 2023-08-03 |  |  |  | 2021-06-23 | 2021-06-30 | 5d | 22.12d |  |  | 강용준 | 24h |  |  |
| 16 | 3.3 | 실적조회 개발 |  | 20d | 2023-08-01 A | 2023-08-29 |  |  | 20d | 2021-03-15 | 2021-04-16 | 24.5d | 5.12d |  |  | 김기범 | 160h |  | 3.14 |
| 17 | 3.4 | 실적조회 마이그레이션 |  | 3d | 2023-08-01 A | 2023-08-03 |  |  | 3d | 2021-06-02 | 2021-06-23 | 16d | 22.12d |  |  | 김기범 | 24h |  |  |
| 18 | 3.5 | 3년동안 사용하지 않은 상품 Backup 및 삭제 |  | 2d | 2023-08-01 A | 2023-08-02 |  |  | 2d | 2021-04-16 | 2021-07-14 | 61.5d | 23.12d |  |  | 김기범 | 16h |  |  |
| 19 | 3.6 | 2018년 이전 주문 Backup 및 삭제 |  | 2d | 2023-08-01 A | 2023-08-02 |  |  | 2d | 2021-04-30 | 2021-05-24 | 15d | 23.12d |  |  | 김기범 | 16h |  |  |
| 20 | 4 | **Git (AWS 개발장비 생성 후)** |  | 5d | 2023-08-01 A | 2023-08-08 |  |  | 5d |  |  |  |  |  |  |  | 56h |  |  |
| 21 | 4.1 | Git Hub 생성 |  | 1d | 2023-08-01 A | 2023-08-01 |  |  | 1d |  |  |  | 24.12d |  | start no earlier than 2023-08-01 | 김기범 | 8h |  |  |
| 22 | 4.2 | Git 변환 |  | 1d | 2023-08-01 A | 2023-08-02 |  |  | 1d |  |  |  | 4d |  |  | 김기범 | 8h |  |  |
| 23 | 4.3 | 젠킨스 작업 |  | 5d | 2023-08-01 A | 2023-08-08 |  |  | 5d |  |  |  | 0d |  |  | 김기범 | 40h |  |  |
| 24 | 5 | **실서버 세팅** |  | 5d | 2023-08-01 A | 2023-08-07 |  |  | 5d |  |  |  | 26.12d |  |  |  | 168h |  |  |
| 25 | 5.1 | **DB 세팅** |  | 0d | 2023-08-01 A | 2023-08-01 A |  | 100% |  |  |  |  |  |  |  |  |  |  |  |
| 26 | 5.1.1 | OK플라자 DB 세팅(리스토어) | milestone | 0d | 2023-08-01 A | 2023-08-01 A |  | 100% |  |  |  |  |  |  |  | 김은별 |  |  |  |
| 27 | 5.1.2 | K-Link DB 세팅(리스토어) | milestone | 0d | 2023-08-01 A | 2023-08-01 A |  | 100% |  |  |  |  |  |  |  | 김은별 |  |  |  |
| 28 | 5.1.3 | B24 DB 세팅(리스토어) | milestone | 0d | 2023-08-01 A | 2023-08-01 A |  | 100% |  |  |  |  |  |  |  | 김은별 |  |  |  |

| ID | WBS | Task | Type | Duration | Start | Finish | Complete | Remaining | Total slack | Resources | Work |
| --- | --- | --- | --- | --- | --- | --- | --- | --- | --- | --- | --- |
| 29 | 5.2 | **Okplaza BI** |  | 5d | 2023-08-01 A | 2023-08-07 |  | 5d | 26.12d |  | 40h |
| 30 | 5.2.1 | Okplaza BI Tomcat 서버 세팅 | milestone | 0d | 2023-08-01 A | 2023-08-01 A | 100% |  |  | 김기범 |  |
| 31 | 5.2.2 | 검색엔진 세팅 | milestone | 0d | 2023-08-01 A | 2023-08-01 A | 100% |  |  | 김은별 |  |
| 32 | 5.2.3 | 레포팅툴 | milestone | 0d | 2023-08-01 A | 2023-08-01 A | 100% |  |  | 김은별 |  |
| 33 | 5.2.4 | K-Link 세팅 | milestone | 0d | 2023-08-01 A | 2023-08-01 A | 100% |  |  | 김은별 |  |
| 34 | 5.2.5 | Agent 설치(비즈톡 알림/문자, Telink) | milestone | 0d | 2023-08-01 A | 2023-08-01 A | 100% |  |  | 김은별 |  |
| 35 | 5.2.6 | Scouter |  | 5d | 2023-08-01 | 2023-08-07 |  |  | 20.12d | 조준범 | 40h |
| 36 | 5.3 | Okplaza Front Web/Was 세팅 |  | 3d | 2023-08-01 A | 2023-08-03 |  | 3d | 22.12d | 김기범; 김은별 | 48h |
| 37 | 5.4 | Okplaza Admin Web/Was 세팅 |  | 1d | 2023-08-01 A | 2023-08-01 |  | 1d | 24.12d | 김기범; 김은별 | 16h |
| 38 | 5.5 | WMS Web/Was 세팅 |  | 1d | 2023-08-01 A | 2023-08-01 |  | 1d | 24.12d | 김기범; 김은별 | 16h |
| 39 | 5.6 | OKSafety Web/Was 세팅 |  | 3d | 2023-08-01 | 2023-08-03 |  |  | 22.12d | 조준범 | 24h |
| 40 | 5.7 | B24Market Web/Was 세팅 |  | 3d | 2023-08-01 | 2023-08-03 |  |  | 22.12d | 조준범 | 24h |
| 41 | 6 | **테스트** |  | 5d | 2023-08-01 A | 2023-08-07 |  | 5d | 26.12d |  | 192h |
| 42 | 6.1 | Okplaza Front 테스트 |  | 5d | 2023-08-01 A | 2023-08-07 |  | 5d | 20.12d | 김기범 | 40h |
| 43 | 6.2 | Okplaza Admin 테스트 | milestone | 0d | 2023-08-01 A | 2023-08-01 A | 100% |  |  | 김은별 |  |
| 44 | 6.3 | WMS 테스트 |  | 3d | 2023-08-01 | 2023-08-03 |  |  | 22.12d | 조준범 | 24h |
| 45 | 6.4 | Batch/IF 테스트 |  | 5d | 2023-08-01 A | 2023-08-07 |  | 5d | 20.12d | 김기범; 김은별 | 80h |
| 46 | 6.5 | OKSafety 테스트 |  | 3d | 2023-08-01 | 2023-08-03 |  |  | 22.12d | 조준범 | 24h |
| 47 | 6.6 | B24Market 테스트 |  | 3d | 2023-08-01 | 2023-08-03 |  |  | 22.12d | 조준범 | 24h |
| 48 | 7 | **최종반영** |  | 0d | 2023-08-01 A | 2023-08-01 A | 100% |  |  |  |  |
| 49 | 7.1 | DB 이관(최종 DB 리스토어, Okplaza, K-Link, B24) | milestone | 0d | 2023-08-01 A | 2023-08-01 A | 100% |  |  | 김은별; 김기범; 조준범 |  |
